# Разработка ПО

Schedule from MS Project, 2015-04-21 to 2015-06-30, status date 2003-04-18, 7 hours a day, costs in р..
«Богданов и партнеры»

## Calendars

- Standard: Mon-Fri 10:00-12:00, 13:00-18:00; Sat-Sun off.

## Resources

| Resource | Group | Unit | Rate | Cost per use |
| --- | --- | --- | --- | --- |
| Менеджер проекта(Хомицький) | Сотрудники |  | 11 |  |
| Разработчик(Хомицький) | Сотрудники |  | 10 |  |
| Тестировщик(Макарчук) | Сотрудники |  | 10 |  |
| Администратор(Кулешов) | Сотрудники |  | 10 |  |
| Проектор |  | Штука |  | 100 |
| Заказчик |  |  | 10 |  |
| Аналитик | Нанятые эксперты |  | 10 |  |
| Проектировщик | Нанятые эксперты |  | 10 |  |

## Schedule

| ID | WBS | Task | Type | Duration | Start | Finish | Predecessors | Baseline start | Baseline finish | Baseline duration | Total slack | Free slack | Constraint | Resources | Work | Cost | Baseline cost | PGUIDE:TSK_TXT_RISKDESCRIBE |
| --- | --- | --- | --- | --- | --- | --- | --- | --- | --- | --- | --- | --- | --- | --- | --- | --- | --- | --- |
| 1 | 1 | **Постановка задачи** |  | 17d | 2015-04-21 | 2015-05-13 |  | 2003-04-03 | 2003-04-25 | 16.83d | 0d |  |  |  | 109.95h | 1,123.15 | 887.02 |  |
| 2 | 1.1 | Сбор требований |  | 7d | 2015-04-21 | 2015-04-29 |  | 2003-04-03 | 2003-04-11 | 6.83d | 0d |  | start no earlier than 2015-04-21 | Аналитик; Менеджер проекта(Хомицький) [42.9%] | 63.35h | 647.85 | 386.52 | Список требований |
| 3 | 1.2 | Анализ требований |  | 4d | 2015-04-30 | 2015-05-05 | 2 | 2003-04-11 | 2003-04-17 | 4d | 0d |  |  | Аналитик | 28h | 280 | 280 | ОПЗ |
| 4 | 1.3 | Согласование требований с Заказчиком |  | 1w | 2015-05-06 | 2015-05-12 | 3 | 2003-04-17 | 2003-04-24 | 1w | 0d |  |  | Менеджер проекта(Хомицький) [30%]; Аналитик [30%] | 18.6h | 195.3 | 220.5 | Подписанное ОПЗ |
| 5 | 1.4 | Внутренняя постановка задачи завершена | milestone | 0d | 2015-05-12 | 2015-05-12 | 4 | 2003-04-24 | 2003-04-24 | 0d | 0d |  |  |  |  |  |  |  |
| 6 | 1.5 | Постановка задачи завершена | milestone | 0d | 2015-05-13 | 2015-05-13 | 5FS+1d | 2003-04-25 | 2003-04-25 | 0d | 0d |  |  |  |  |  |  |  |
| 7 | 2 | **Проектирование** |  | 7.86d | 2015-05-14 | 2015-05-25 | 6 | 2003-04-25 | 2003-05-06 | 4.5d | 0d |  |  |  | 33.59h | 335.88 | 325 |  |
| 8 | 2.1 | Проектирование логической модели |  | 2d | 2015-05-14 | 2015-05-25 |  | 2003-04-25 | 2003-04-29 | 2d | 0d |  |  | Проектировщик | 13.17h | 131.67 | 131.67 | Логическая модель |
| 9 | 2.2 | Проектирование физической модели |  | 5d | 2015-05-15 | 2015-05-21 |  | 2003-04-29 | 2003-05-06 | 2.5d | 6.14d | 0d | start no earlier than 2015-05-15 | Проектировщик [85.3%] | 17.33h | 173.33 | 173.33 | Физическая модель |
| 10 | 2.3 | Создание плана тестирования |  | 5.42h | 2015-05-19 | 2015-05-19 | 9SS | 2003-04-29 | 2003-04-30 | 1.83h | 14.99d | 2.2d | start no earlier than 2015-05-19 | Проектировщик [56.9%] | 3.09h | 30.88 | 20 | План тестирования |
| 11 | 2.4 | Прооектирование завершено | milestone | 0d | 2015-05-21 | 2015-05-21 | 9, 10 | 2003-05-06 | 2003-05-06 | 0d | 12.79d |  |  |  |  |  |  |  |
| 12 | 3 | **Реализация** |  | 18.86d | 2015-05-22 | 2015-06-17 |  | 2003-04-29 | 2003-05-07 | 3.64d | 1.86d |  |  |  | 106h | 1,060 | 220 |  |
| 13 | 3.1 | Создание структуры базы данных |  | 2h | 2015-05-22 | 2015-05-22 | 9 | 2003-05-06 | 2003-05-06 | 2h | 6.14d | 0d |  | Разработчик(Хомицький) | 2h | 20 | 20 | Увольнение сотрудника |
| 14 | 3.2 | Разработка интерфейса для авторизации пользователя |  | 15h | 2015-05-25 | 2015-05-27 | 8 | 2003-04-29 | 2003-04-30 | 2h | 0d |  |  | Разработчик(Хомицький) | 15h | 150 | 20 |  |
| 15 | 3.3 | Разработка интерфейса каталогов |  | 2d | 2015-05-28 | 2015-05-29 | 14 |  |  |  | 0d |  | finish no earlier than 2015-05-28 | Разработчик(Хомицький) [85.7%] | 12h | 120 |  |  |
| 16 | 3.4 | Разработка интерфейса текстового редактора |  | 2.29d | 2015-06-01 | 2015-06-03 | 15 |  |  |  | 0d |  | start no earlier than 2015-05-27 | Разработчик(Хомицький) | 16h | 160 |  |  |
| 17 | 3.5 | Разработка бизнес-сервисов |  | 18h | 2015-06-03 | 2015-06-05 | 16 | 2003-05-06 | 2003-05-07 | 6h | 0d |  |  | Разработчик(Хомицький) [33.3%]; Проектировщик [33.3%] | 12h | 120 | 120 |  |
| 18 | 3.6 | Реализация связи клиент-сервер |  | 3d | 2015-06-05 | 2015-06-10 | 17 |  |  |  | 0d |  |  | Разработчик(Хомицький) [66.7%] | 14h | 140 |  |  |
| 19 | 3.7 | Реализация парсера формул |  | 5d | 2015-06-10 | 2015-06-17 | 18 | 2003-04-30 | 2003-04-30 | 6h | 0d |  |  | Разработчик(Хомицький) | 35h | 350 | 60 |  |
| 20 | 3.8 | Реализация завершена | milestone | 0d | 2015-06-17 | 2015-06-17 | 19 | 2003-05-07 | 2003-05-07 | 0d | 0d |  |  | Разработчик(Хомицький) |  |  |  |  |
| 21 | 4 | **Тестирование** |  | 7.29d | 2015-06-17 | 2015-06-29 |  | 2003-05-07 | 2003-05-12 | 2.79d | 0d |  |  |  | 40.5h | 405 | 195 |  |
| 22 | 4.1 | Сборка релиза |  | 2h | 2015-06-17 | 2015-06-18 | 20 | 2003-05-07 | 2003-05-07 | 2h | 0d |  |  | Администратор(Кулешов) | 2h | 20 | 20 |  |
| 23 | 4.2 | Тестирование - раунд 1 |  | 4d | 2015-06-18 | 2015-06-24 | 22 | 2003-05-07 | 2003-05-08 | 1d | 0d |  |  | Тестировщик(Макарчук) | 28h | 280 | 70 |  |
| 24 | 4.3 | Исправление ошибок |  | 1d | 2015-06-24 | 2015-06-25 | 23 | 2003-05-08 | 2003-05-09 | 1d | 0d |  |  | Разработчик(Хомицький) | 7h | 70 | 70 |  |
| 25 | 4.4 | Тестирование - раунд 2 |  | 2d | 2015-06-25 | 2015-06-29 | 24 | 2003-05-09 | 2003-05-12 | 0.5d | 0d |  |  | Тестировщик(Макарчук) [25%] | 3.5h | 35 | 35 |  |
| 26 | 4.5 | Тестирование завершено | milestone | 0d | 2015-06-29 | 2015-06-29 | 25 | 2003-05-12 | 2003-05-12 | 0d | 0d |  |  |  |  |  |  |  |

| ID | WBS | Task | Type | Duration | Start | Finish | Predecessors | Baseline start | Baseline finish | Baseline duration | Total slack | Resources | Work | Cost | Baseline cost |
| --- | --- | --- | --- | --- | --- | --- | --- | --- | --- | --- | --- | --- | --- | --- | --- |
| 27 | 5 | **Сдача-приемка** |  | 6.14d | 2015-06-22 | 2015-06-30 |  | 2003-05-05 | 2003-05-13 | 6.14d | 0d |  | 22h | 428 | 428 |
| 28 | 5.1 | Согласование времени демонстрации |  | 1h | 2015-06-22 | 2015-06-22 | 29SF-5d | 2003-05-05 | 2003-05-05 | 1h | 6d | Менеджер проекта(Хомицький) | 1h | 11 | 11 |
| 29 | 5.2 | Демонстрация заказчику |  | 1d | 2015-06-29 | 2015-06-30 | 26 | 2003-05-12 | 2003-05-13 | 1d | 0d | Менеджер проекта(Хомицький); Тестировщик(Макарчук); Разработчик(Хомицький); Проектор [1 Штука] | 21h | 417 | 417 |
| 30 | 5.3 | Продукт передан заказчику | milestone | 0d | 2015-06-30 | 2015-06-30 | 29 | 2003-05-13 | 2003-05-13 | 0d | 0d |  |  |  |  |
| 31 | 6 | Проект завершен | milestone | 0d | 2015-06-30 | 2015-06-30 | 30 | 2003-05-13 | 2003-05-13 | 0d | 0d |  |  |  |  |
